# SI OPS

Schedule from GanttProject, 2023-12-01 to 2024-05-30.
Holidays every year on 01-01, 05-01, 05-08, 07-14, 08-15, 11-01, 11-11, 12-25

## Calendars

- Project calendar: Mon-Fri working; Sat-Sun off. Exceptions (off unless hours are given): 2024-04-01 (Lundi de Pâques), 2024-05-09 (Ascension), 2024-05-20 (Lundi de Pentecôte).

## Schedule

| ID | WBS | Task | Type | Duration | Start | Finish |
| --- | --- | --- | --- | --- | --- | --- |
| 1 | 1 | **Analyse** |  | 16d | 2023-12-01 | 2023-12-22 |
| 2 | 1.1 | Récupérer code et BDD des deux applications |  | 6d | 2023-12-01 | 2023-12-08 |
| 3 | 1.2 | Validation par le pôle projets |  | 10d | 2023-12-11 | 2023-12-22 |
| 4 | 1.3 | Validation du workflow et vision claire de l'IHM |  | 16d | 2023-12-01 | 2023-12-22 |
| 5 | 2 | **Infrastructure** |  | 40d | 2023-12-04 | 2024-01-30 |
| 6 | 2.1 | Rédaction DEB et EBS |  | 10d | 2023-12-04 | 2023-12-15 |
| 7 | 2.2 | Création environnement qualif STIG |  | 19d | 2023-12-04 | 2023-12-29 |
| 8 | 2.3 | Création environnement prod STIG |  | 30d | 2023-12-18 | 2024-01-30 |
| 9 | 3 | SIRD créer demande d'interface référentiels |  | 38d | 2023-12-04 | 2024-01-26 |
| 10 | 4 | **Développement** |  | 74d | 2023-12-08 | 2024-03-22 |
| 11 | 4.1 | DEV LOT 1 Création de la demande |  | 34d | 2023-12-08 | 2024-01-26 |
| 12 | 4.2 | Livraison lot 1 | milestone | 0d | 2024-01-29 | 2024-01-29 |
| 13 | 4.3 | Recette et correctifs lot 1 |  | 15d | 2024-01-29 | 2024-02-16 |
| 14 | 4.4 | DEV LOT 2 Workflow des demandes et notifications |  | 42d | 2024-01-02 | 2024-02-28 |
| 15 | 4.5 | Livraison lot 2 | milestone | 0d | 2024-02-29 | 2024-02-29 |
| 16 | 4.6 | Recette et correctifs lot 2 |  | 17d | 2024-02-29 | 2024-03-22 |
| 17 | 5 | **SSO** |  | 61d | 2023-12-05 | 2024-02-29 |
| 18 | 5.1 | SSO determination de la liste de codes unités utilisatrices |  | 9d | 2023-12-05 | 2023-12-15 |
| 19 | 5.2 | SSO Préparation par le BCOF d'un modèle pour le SSO basé sur la liste des codes unités utilisatrices |  | 9d | 2023-12-18 | 2023-12-29 |
| 20 | 5.3 | SSO Raccordement SSO QUAL |  | 20d | 2024-01-02 | 2024-01-29 |
| 21 | 5.4 | SSO Raccordement SSO PROD |  | 24d | 2024-01-29 | 2024-02-29 |
| 22 | 6 | VABF |  | 9d | 2024-03-25 | 2024-04-05 |
| 23 | 7 | Installation en production | milestone | 0d | 2024-04-03 | 2024-04-03 |
| 24 | 8 | VSR |  | 9d | 2024-04-03 | 2024-04-15 |
| 25 | 9 | Mise en production V1 | milestone | 0d | 2024-04-16 | 2024-04-16 |
| 26 | 10 | Analyse et DEV Lot 3 Statistiques |  | 18d | 2024-05-02 | 2024-05-30 |
